# CPROY_V1.0_2015

Schedule from MS Project, 2015-09-12 to 2016-07-20, A marks actual dates.

## Calendars

- Calendario UTP: Mon-Sat 09:00-13:00, 15:00-19:00; Sun off. Exceptions (off unless hours are given): 2015-10-08 (Combate de Angamos), 2015-11-01 (Dia de los Muertos), 2016-05-22 09:00-13:00, 15:00-19:00.

## Resources

| Resource |
| --- |
| Edwar |
| Julio |
| Roger |
| MST EIRL |
| Carlos |
| Gerson |
| Paolo |
| Utp |
| Jhonatan |
| -- |

## Schedule

| ID | WBS | Task | Type | Duration | Start | Finish | Predecessors | Complete | Remaining | Actual start | Total slack | Free slack | Constraint | Resources | Work | Actual work |
| --- | --- | --- | --- | --- | --- | --- | --- | --- | --- | --- | --- | --- | --- | --- | --- | --- |
| 1 | 1 | **Proyecto UTP-CONTROLL-SYSTEM-ASSISTANCE-GPS** |  | 69d | 2016-05-02 | 2016-07-19 |  | 85% | 10.65d | 2015-09-12 |  |  |  | Carlos; Gerson; Paolo; Jhonatan; Utp | 23855h | 15996.3h |
| 2 | 1.1 | **Proceso de Gestión** |  | 69d | 2016-05-02 | 2016-07-19 |  | 69% | 21.65d | 2015-09-19 |  |  |  | Carlos; Gerson; Jhonatan; Utp; Paolo | 10237h | 5138.27h |
| 3 | 1.1.1 | **Inicio** |  | 69d | 2016-05-02 A | 2016-07-20 |  | 99% | 0.38d |  |  |  |  | Carlos; Gerson; Jhonatan; Paolo | 2220h | 2176h |
| 4 | 1.1.1.1 | Revisión de la Metodología de Trabajo |  | 68.38d | 2016-05-02 A | 2016-07-20 |  | 99% | 0.38d |  | 0d |  | finish no earlier than 2016-07-20 | Carlos; Gerson; Jhonatan; Paolo | 2188h | 2176h |
| 5 | 1.1.2 | **Planificación** |  | 19d | 2016-05-02 A | 2016-05-22 |  | 42% | 10.93d |  |  |  |  | Carlos; Gerson; Paolo; Jhonatan; Utp | 3048h | 1624.27h |
| 6 | 1.1.2.1 | **Plan del Proyecto** |  | 11d | 2016-05-04 | 2016-05-16 | 4 | 42% | 6.33d | 2016-05-02 |  |  |  | Carlos; Gerson; Jhonatan; Paolo | 2288h | 1584.27h |
| 7 | 1.1.2.1.1 | **Elaboración de Plan de Proyecto** |  | 20d | 2016-05-02 A | 2016-05-23 |  | 46% | 10.88d |  |  |  |  | Carlos; Gerson; Jhonatan; Paolo | 1692h | 1175.6h |
| 8 | 1.1.2.1.1.1 | Definir Nombre del Proyecto |  | 1d | 2016-05-04 A | 2016-05-04 |  | 88% | 0.12d |  | 66.88d |  | finish no earlier than 2016-05-04 | Carlos; Gerson; Jhonatan; Paolo | 32h | 28h |
| 9 | 1.1.2.1.1.2 | Definir Objetivos de Proyecto |  | 1d | 2016-05-04 A | 2016-05-04 A |  | 100% |  |  |  |  |  | Carlos; Gerson; Jhonatan; Paolo | 32h | 32h |
| 10 | 1.1.2.1.1.3 | Elaboración de Cronograma Detallado | manual | 17d | 2016-05-04 A | 2016-05-22 |  | 10% | 15.3d |  |  |  |  | Carlos | 136h | 13.6h |
| 11 | 1.1.2.1.1.4 | Gestión de Comunicaciones |  | 1d | 2016-05-14 A | 2016-05-16 |  | 40% | 0.6d |  | 57d |  | finish no earlier than 2016-05-16 | Carlos; Gerson; Jhonatan; Paolo | 32h | 12.8h |
| 12 | 1.1.2.1.1.5 | Necesidades del Proyecto | manual | 3d | 2016-05-16 A | 2016-05-18 |  | 50% | 1.5d |  |  |  |  | Carlos; Gerson; Jhonatan; Paolo | 96h | 48h |
| 13 | 1.1.2.1.1.6 | Identificación de Riesgos del Proyecto | manual | 5d | 2016-05-18 A | 2016-05-23 A |  | 100% |  |  |  |  |  | Jhonatan | 40h | 40h |
| 14 | 1.1.2.1.1.7 | Elaborar Documento de Riesgos del Proyecto |  | 4.88d | 2016-05-18 A | 2016-05-23 |  | 20% | 3.9d |  | 50d |  | finish no earlier than 2016-05-23 | Carlos; Gerson; Jhonatan; Paolo | 156h | 31.2h |
| 15 | 1.1.2.1.1.8 | Elaborar Documento Plan de Proyecto |  | 17d | 2016-05-04 A | 2016-05-23 |  | 64% | 6.12d |  | 50d |  | finish no earlier than 2016-05-23 | Carlos; Gerson; Jhonatan; Paolo | 544h | 348h |
| 16 | 1.1.2.1.1.9 | Traspaso de Información |  | 1d | 2016-05-15 A | 2016-05-16 |  | 88% | 0.12d |  | 56.88d |  |  | Carlos; Gerson | 16h | 14h |
| 17 | 1.1.2.1.2 | **Revisión Interna del Plan de Proyecto** |  | 9d | 2016-05-18 | 2016-05-26 |  | 7% | 8.35d | 2016-05-22 |  |  |  |  | 144h | 20.67h |
| 18 | 1.1.2.1.2.1 | Revisión de Plan de Proyecto por el equipo del Proyecto |  | 1d | 2016-05-22 A | 2016-05-22 |  |  | 1d |  | 1.52d | 0d | finish no earlier than 2016-05-22 | Carlos; Gerson; Jhonatan; Paolo | 32h |  |
| 19 | 1.1.2.1.2.2 | Ajustes al Plan de Proyecto |  | 2d | 2016-05-22 A | 2016-05-25 | 18 | 32% | 1.35d |  | 48d |  | finish no earlier than 2016-05-25 | Carlos; Gerson; Jhonatan; Paolo | 64h | 20.67h |
| 20 | 1.1.2.1.2.3 | Traspaso de Información |  | 6d | 2016-05-23 | 2016-05-28 |  |  |  |  | 44.88d |  | start no earlier than 2016-05-23 | Carlos | 48h |  |
| 21 | 1.1.2.1.3 | **Gestión de la Configuración** |  | 8d | 2016-05-16 A | 2016-05-23 |  | 78% | 1.78d |  |  |  |  | Carlos | 100h | 36h |
| 22 | 1.1.2.1.3.1 | Establecer Repositorio de Datos | manual | 3d | 2016-05-16 A | 2016-05-18 |  | 67% | 1d |  |  |  | start no earlier than 2016-05-16 | Carlos | 24h | 16h |
| 23 | 1.1.2.1.3.2 | Asignar Gestor de Configuración |  | 0.5d | 2016-05-16 A | 2016-05-16 A | 22 | 100% |  |  |  |  | finish no earlier than 2015-09-05 | Carlos | 4h | 4h |
| 24 | 1.1.2.1.3.3 | Elaborar Solicitud de Accesos |  | 1d | 2016-05-16 A | 2016-05-16 A |  | 100% |  |  |  |  | start no earlier than 2015-09-05 | Carlos | 8h | 8h |

Notes:
- 8: UTP-GPS-ALARM
- 9: Inciso 4 de Plan de Proyecto
- 11: 9.2.4 de Plan de Proyecto
- 12: 6 de Plan de Proyecto
- 13: 9.1 de Plan de Proyecto
- 14: REGRI_V1.0_2015.xlsx
- 15: PPROY_V1.0_2015

| ID | WBS | Task | Duration | Start | Finish | Predecessors | Complete | Remaining | Actual start | Total slack | Free slack | Constraint | Resources | Work | Actual work |
| --- | --- | --- | --- | --- | --- | --- | --- | --- | --- | --- | --- | --- | --- | --- | --- |
| 25 | 1.1.3 | **Asignación, Ejecución, Seguimiento y Control** | 22d | 2016-05-02 | 2016-05-25 |  | 59% | 9.01d | 2015-09-19 |  |  |  | Carlos; Gerson; Jhonatan; Paolo | 2145h | 1274h |
| 26 | 1.1.3.1 | **Desarrollo del Área de Proceso PP- PMC** | 22d | 2016-05-02 | 2016-05-25 |  | 28% | 15.75d | 2015-09-19 |  |  |  | Carlos; Gerson; Jhonatan; Paolo | 982h | 111h |
| 27 | 1.1.3.1.1 | Elaborar Plantilla de Reunión Externa Quincenal | 1d | 2016-05-15 A | 2016-05-16 |  |  | 1d |  | 2d | 1d |  | Paolo | 8h |  |
| 28 | 1.1.3.1.2 | Elaborar Plantilla de Gestion de Riesgos | 6d | 2016-05-18 A | 2016-05-23 | 27 | 17% | 5d |  | 49.88d |  | finish no earlier than 2016-05-23 | Jhonatan | 48h | 8h |
| 29 | 1.1.3.1.3 | Elaborar Plantilla de Informe de Avances Quincenales | 1d | 2016-05-02 A | 2016-05-02 A | 28 | 100% |  |  |  |  |  | Paolo | 8h | 8h |
| 30 | 1.1.3.1.4 | Elaborar Plantillas de Actas de Reunión Interna Quincenal | 1d | 2016-05-18 A | 2016-05-18 | 29 | 88% | 0.12d |  | 54.88d |  |  | Paolo | 8h | 7h |
| 31 | 1.1.3.1.5 | Elaborar Formato de Aceptación de Entregables | 2.88d | 2016-05-16 A | 2016-05-18 |  | 35% | 1.88d |  | 0d |  | finish no earlier than 2016-05-18 | -- | 23h | 8h |
| 32 | 1.1.3.1.6 | Elaborar Documento Gestión de Procesos PP-PMC | 21.88d | 2016-05-02 A | 2016-06-06 | 31 | 23% | 16.88d |  | 38.12d |  | finish no earlier than 2016-05-25 | Carlos | 175h | 40h |
| 33 | 1.1.3.1.7 | Traspaso de Información | 1d | 2015-09-19 A | 2015-09-19 A |  | 100% |  |  |  |  | start no earlier than 2015-09-21 | Edwar | 8h | 8h |
| 34 | 1.1.3.2 | **Desarrollo del Área de Proceso REQM** | 4d | 2015-09-30 A | 2015-10-03 A |  | 100% |  |  |  |  |  | Edwar; Roger | 112h | 112h |
| 35 | 1.1.3.2.1 | Elaborar Formato de Solicitud a Cambios a Requerimientos | 1d | 2015-09-30 A | 2015-09-30 A |  | 100% |  |  |  |  |  | Roger | 8h | 8h |
| 36 | 1.1.3.2.2 | Elaborar Formato de Matriz de Trazabilidad de Requerimientos | 1d | 2015-09-30 A | 2015-09-30 A |  | 100% |  |  |  |  |  | Roger | 8h | 8h |
| 37 | 1.1.3.2.3 | Elaborar Formato de Registro de Cambios a Requerimientos | 1d | 2015-09-30 A | 2015-09-30 A |  | 100% |  |  |  |  |  | Roger | 8h | 8h |
| 38 | 1.1.3.2.4 | Elaborar Documento de Proceso de Gestión de cambios de Requerimientos | 2d | 2015-10-01 A | 2015-10-02 A |  | 100% |  |  |  |  |  | Roger | 16h | 16h |
| 39 | 1.1.3.2.5 | Traspaso de Información | 1d | 2015-10-03 A | 2015-10-03 A |  | 100% |  |  |  |  |  | Edwar | 8h | 8h |
| 40 | 1.1.3.3 | **Desarrollo del Área de Proceso PPQA** | 4d | 2015-10-07 A | 2015-10-12 A |  | 100% |  |  |  |  |  | Edwar; Julio | 128h | 128h |
| 41 | 1.1.3.3.1 | Elaborar Formato de CheckList de Aseguramiento de la Calidad | 1d | 2015-10-07 A | 2015-10-07 A |  | 100% |  |  |  |  |  | Julio | 8h | 8h |
| 42 | 1.1.3.3.2 | Elaborar Herramienta de Gestión de Aseguramiento de la Calidad | 1d | 2015-10-07 A | 2015-10-07 A | 41 | 100% |  |  |  |  |  | Julio | 8h | 8h |
| 43 | 1.1.3.3.3 | Elaborar Plantilla de Informe General de QA | 1d | 2015-10-07 A | 2015-10-07 A | 42 | 100% |  |  |  |  |  | Julio | 8h | 8h |
| 44 | 1.1.3.3.4 | Elaborar Formato de Solicitud de Control de Calidad del Producto | 1d | 2015-10-07 A | 2015-10-07 A | 43 | 100% |  |  |  |  |  | Julio | 8h | 8h |
| 45 | 1.1.3.3.5 | Elaborar documento de Proceso de Aseguramiento de la calidad | 3d | 2015-10-08 A | 2015-10-12 A | 44 | 100% |  |  |  |  |  | Julio | 24h | 24h |
| 46 | 1.1.3.3.6 | Traspaso de Información | 1d | 2015-10-12 A | 2015-10-12 A | 45 | 100% |  |  |  |  |  | Edwar | 8h | 8h |
| 47 | 1.1.3.4 | **Desarrollo del Área de Proceso MA** | 4d | 2015-10-14 A | 2015-10-17 A |  | 100% |  |  |  |  |  | Edwar; Julio; Roger | 163h | 163h |
| 48 | 1.1.3.4.1 | Elaborar Formato de Ficha de Métricas de Numero de N Conformidades de Producto | 1d | 2015-10-14 A | 2015-10-14 A |  | 100% |  |  |  |  |  | Roger | 8h | 8h |
| 49 | 1.1.3.4.2 | Elaborar Formato de Ficha de Métricas de Índice de Cambios de Ítems de Configuración | 1d | 2015-10-14 A | 2015-10-14 A | 48 | 100% |  |  |  |  |  | Roger | 8h | 8h |
| 50 | 1.1.3.4.3 | Elaborar Formato de Ficha de Métricas de Volatilidad de Requerimientos | 1d | 2015-10-14 A | 2015-10-14 A |  | 100% |  |  |  |  | start no earlier than 2015-10-17 | Roger | 8h | 8h |
| 51 | 1.1.3.4.4 | Elaborar Formato de Ficha de Métricas de Exposición al Riesgo | 1d | 2015-10-14 A | 2015-10-14 A | 50 | 100% |  |  |  |  |  | Roger | 8h | 8h |
| 52 | 1.1.3.4.5 | Elaborar Formato de Tablero de Métricas | 1d | 2015-10-14 A | 2015-10-14 A | 51 | 100% |  |  |  |  |  | Roger | 8h | 8h |
| 53 | 1.1.3.4.6 | Elaborar Documento de Proceso de Medicion de Métricas | 2d | 2015-10-15 A | 2015-10-16 A | 52 | 100% |  |  |  |  |  | Roger | 16h | 16h |
| 54 | 1.1.3.4.7 | Traspaso de Información | 1d | 2015-10-17 A | 2015-10-17 A | 53 | 100% |  |  |  |  |  | Edwar | 8h | 8h |

Notes:
- 32: PPT

| ID | WBS | Task | Duration | Start | Finish | Predecessors | Complete | Constraint | Resources | Work | Actual work |
| --- | --- | --- | --- | --- | --- | --- | --- | --- | --- | --- | --- |
| 55 | 1.1.3.5 | **Desarrollo del Área de Proceso CM** | 3d | 2015-10-14 A | 2015-10-16 A |  | 100% |  | Edwar | 56h | 56h |
| 56 | 1.1.3.5.1 | Elaborar Formato de Registro de Ítems de Configuración | 1d | 2015-10-14 A | 2015-10-14 A |  | 100% |  | Edwar | 8h | 8h |
| 57 | 1.1.3.5.2 | Elaborar Formato de Solicitud de Accesos | 1d | 2015-10-14 A | 2015-10-14 A |  | 100% |  | Edwar | 8h | 8h |
| 58 | 1.1.3.5.3 | Elaborar Documento de Proceso de Gestión de Configuración | 1d | 2015-10-15 A | 2015-10-15 A |  | 100% |  | Edwar | 8h | 8h |
| 59 | 1.1.3.5.4 | Traspaso de Información | 1d | 2015-10-16 A | 2015-10-16 A | 58 | 100% |  | Edwar | 8h | 8h |
| 60 | 1.1.4 | **Cierre** | 2d | 2015-11-18 A | 2015-11-19 A |  | 100% |  | Edwar; Julio; MST EIRL; Roger | 64h | 64h |
| 61 | 1.1.4.1 | **Cierre de Proyecto** | 1d? | 2015-11-18 A | 2015-11-18 A |  | 100% |  |  |  |  |
| 62 | 1.1.4.1.1 | Revisión de Entregables del Proyecto | 0.5d | 2015-11-18 A | 2015-11-18 A |  | 100% |  |  |  |  |
| 63 | 1.1.4.1.2 | Elaboración del Acta de Aceptación y Cierre del Proyecto | 0.5d | 2015-11-18 A | 2015-11-18 A |  | 100% |  |  |  |  |
| 64 | 1.1.4.1.3 | Traspaso de Información | 1d? | 2015-11-18 A | 2015-11-18 A |  | 100% |  |  |  |  |
| 65 | 1.1.4.2 | **Relatorio de Proyecto** | 1d | 2015-11-19 A | 2015-11-19 A |  | 100% |  |  |  |  |
| 66 | 1.1.4.2.1 | Elaborar Relatorio de Proyecto | 1d | 2015-11-19 A | 2015-11-19 A |  | 100% |  |  |  |  |
| 67 | 1.1.4.2.2 | Revisión y ajustes de Relatorio por el equipo del Proyecto | 0.5d | 2015-11-19 A | 2015-11-19 A |  | 100% | start no earlier than 2015-11-19 |  |  |  |
| 68 | 1.1.4.2.3 | Revisión de Relatorio | 0.5d | 2015-11-19 A | 2015-11-19 A | 67 | 100% |  |  |  |  |
| 69 | 1.1.4.2.4 | Traspaso de Información | 1d? | 2015-11-19 A | 2015-11-19 A |  | 100% |  |  |  |  |
| 70 | 1.2 | **Proceso de Ingeniería** | 48d | 2015-09-22 A | 2015-11-17 A |  | 100% |  | Edwar; Julio; Roger | 5743h | 5743h |
| 71 | 1.2.1 | **Software UTP-GPS-ALARM** | 48d | 2015-09-22 A | 2015-11-17 A |  | 100% |  | Edwar; Julio; Roger | 4591h | 4591h |
| 72 | 1.2.1.1 | **Requerimientos** | 13.12d | 2015-09-22 A | 2015-10-06 A |  | 100% |  | Edwar; Julio; Roger | 363h | 363h |
| 73 | 1.2.1.1.1 | Desarrollar Plan de Proyecto | 1d | 2015-09-22 A | 2015-09-22 A |  | 100% |  | Edwar; Julio; Roger | 24h | 24h |
| 74 | 1.2.1.1.2 | Elaborar Matriz de Trazabilidad de Requerimientos | 1d | 2015-10-05 A | 2015-10-05 A |  | 100% |  | Roger | 8h | 8h |
| 75 | 1.2.1.1.3 | Elaborar Lista Maestra de Requerimientos | 1d | 2015-10-05 A | 2015-10-05 A |  | 100% | start no earlier than 2015-10-05 | Roger | 8h | 8h |
| 76 | 1.2.1.1.4 | Traspaso de Información | 1d | 2015-10-06 A | 2015-10-06 A |  | 100% |  | Edwar | 8h | 8h |
| 77 | 1.2.1.2 | **Análisis** | 6.12d | 2015-10-07 A | 2015-10-14 A |  | 100% |  | Edwar; Julio; Roger | 475h | 475h |
| 78 | 1.2.1.2.1 | Revisión de Matriz de Trazabilidad de Requerimientos | 1d | 2015-10-07 A | 2015-10-07 A |  | 100% | start no earlier than 2015-09-14 | Edwar; Roger | 16h | 16h |
| 79 | 1.2.1.2.2 | Elaborar Documento de Análisis | 2d | 2015-10-09 A | 2015-10-10 A |  | 100% | finish no earlier than 2015-10-01 | Edwar; Roger | 32h | 32h |

| ID | WBS | Task | Type | Duration | Start | Finish | Predecessors | Complete | Constraint | Resources | Work | Actual work |
| --- | --- | --- | --- | --- | --- | --- | --- | --- | --- | --- | --- | --- |
| 80 | 1.2.1.2.3 | **Casos de Uso** |  | 2.12d | 2015-10-12 A | 2015-10-13 A |  | 100% |  | Edwar; Julio; Roger | 264h | 264h |
| 81 | 1.2.1.2.3.1 | **Caso de Uso Modulo 1** |  | 2d | 2015-10-12 A | 2015-10-13 A |  | 100% |  | Edwar; Julio; Roger | 72h | 72h |
| 82 | 1.2.1.2.3.1.1 | Entender la problemática actual |  | 1d | 2015-10-12 A | 2015-10-12 A |  | 100% |  | Roger | 8h | 8h |
| 83 | 1.2.1.2.3.1.2 | Elaborar Casos de Uso |  | 1d | 2015-10-12 A | 2015-10-12 A |  | 100% |  | Roger | 8h | 8h |
| 84 | 1.2.1.2.3.1.3 | Actualizar Glosario de Términos |  | 1d | 2015-10-13 A | 2015-10-13 A |  | 100% |  | Roger | 8h | 8h |
| 85 | 1.2.1.2.3.2 | **Caso de Uso Modulo 2** |  | 2.12d | 2015-10-12 A | 2015-10-13 A |  | 100% |  | Edwar; Julio; Roger | 74h | 74h |
| 86 | 1.2.1.2.3.2.1 | Entender la problemática actual |  | 1d | 2015-10-12 A | 2015-10-12 A |  | 100% |  | Roger | 8h | 8h |
| 87 | 1.2.1.2.3.2.2 | Elaborar Casos de Uso |  | 1d | 2015-10-12 A | 2015-10-12 A |  | 100% |  | Roger | 8h | 8h |
| 88 | 1.2.1.2.3.2.3 | Actualizar Glosario de Términos |  | 1d | 2015-10-13 A | 2015-10-13 A |  | 100% |  | Roger | 8h | 8h |
| 89 | 1.2.1.2.3.3 | **Caso de Uso Modulo 3** |  | 2.12d | 2015-10-12 A | 2015-10-13 A |  | 100% |  | Edwar; Julio; Roger | 67h | 67h |
| 90 | 1.2.1.2.3.3.1 | Entender la problemática actual |  | 0.5d | 2015-10-12 A | 2015-10-12 A |  | 100% |  | Roger | 4h | 4h |
| 91 | 1.2.1.2.3.3.2 | Elaborar Casos de Uso |  | 0.5d | 2015-10-12 A | 2015-10-12 A |  | 100% | start no earlier than 2015-09-19 | Roger | 4h | 4h |
| 92 | 1.2.1.2.3.3.3 | Actualizar Glosario de Términos |  | 1d | 2015-10-13 A | 2015-10-13 A |  | 100% |  | Roger | 8h | 8h |
| 93 | 1.2.1.2.4 | Actualizar Matriz de Trazabilidad de Requerimientos |  | 1d | 2015-10-14 A | 2015-10-14 A |  | 100% | start no earlier than 2015-10-14 | Roger | 8h | 8h |
| 94 | 1.2.1.2.5 | Traspaso de Información |  | 1d | 2015-10-14 A | 2015-10-14 A |  | 100% | start no earlier than 2015-10-14 | Edwar | 8h | 8h |
| 95 | 1.2.1.3 | **Diseño** |  | 3d | 2015-10-15 A | 2015-10-17 A |  | 100% |  | Edwar; Julio; Roger | 112h | 112h |
| 96 | 1.2.1.3.1 | Elaborar Documento de Diseño | manual | 3d | 2015-10-15 A | 2015-10-17 A |  | 100% |  | Julio | 24h | 24h |
| 97 | 1.2.1.3.2 | Actualizar Matriz de Trazabilidad de Requerimientos |  | 1d | 2015-10-17 A | 2015-10-17 A |  | 100% | start no earlier than 2015-10-15 | Roger | 8h | 8h |
| 98 | 1.2.1.3.3 | Traspaso de Información |  | 1d | 2015-10-17 A | 2015-10-17 A |  | 100% | finish no earlier than 2015-10-15 | Edwar | 8h | 8h |
| 99 | 1.2.1.4 | **Construcción** |  | 13.12d | 2015-10-24 A | 2015-11-07 A |  | 100% |  | Edwar; Julio; Roger | 1833h | 1833h |
| 100 | 1.2.1.4.1 | **Modulo Configura tu Alarma** |  | 6.12d | 2015-10-24 A | 2015-10-30 A |  | 100% |  | Edwar; Roger | 396h | 396h |
| 101 | 1.2.1.4.1.1 | **Construcción de Modulo** |  | 6.12d | 2015-10-24 A | 2015-10-30 A |  | 100% |  | Edwar; Roger | 298h | 298h |
| 102 | 1.2.1.4.1.1.1 | Enlace del Módulo con el servicio de Google Maps |  | 1d | 2015-10-24 A | 2015-10-24 A |  | 100% |  | Edwar; Julio; Roger | 24h | 24h |
| 103 | 1.2.1.4.1.1.2 | Centrado de Mapa en Posición Actual |  | 1d | 2015-10-26 A | 2015-10-26 A | 102 | 100% |  | Roger; Edwar; Julio | 24h | 24h |
| 104 | 1.2.1.4.1.1.3 | Vista por Satélite del mapa e Información de Tráfico |  | 1d | 2015-10-27 A | 2015-10-27 A | 103 | 100% |  | Edwar; Julio; Roger | 24h | 24h |
| 105 | 1.2.1.4.1.1.4 | Rango de Alarma en el Mapa |  | 1d | 2015-10-28 A | 2015-10-28 A | 104 | 100% |  | Edwar; Julio; Roger | 24h | 24h |
| 106 | 1.2.1.4.1.1.5 | Soporte de Archivos MP3 para las Alarmas |  | 1d | 2015-10-29 A | 2015-10-29 A | 105 | 100% |  | Edwar; Julio; Roger | 24h | 24h |
| 107 | 1.2.1.4.1.1.6 | Activar función de Vibración del Teléfono para Alarmas |  | 1d | 2015-10-30 A | 2015-10-30 A | 106 | 100% |  | Edwar; Julio; Roger | 24h | 24h |
| 108 | 1.2.1.4.1.1.7 | Establecer control de Volumen |  | 1d | 2015-10-30 A | 2015-10-30 A |  | 100% | start no earlier than 2015-10-30 | Edwar; Julio; Roger | 24h | 24h |
| 109 | 1.2.1.4.1.1.8 | Establecer tipo de Alarma |  | 1d | 2015-10-30 A | 2015-10-30 A |  | 100% | start no earlier than 2015-10-30 | Edwar; Julio; Roger | 24h | 24h |
| 110 | 1.2.1.4.1.1.9 | Traspaso de Información |  | 1d | 2015-10-30 A | 2015-10-30 A |  | 100% | start no earlier than 2015-10-30 | Edwar | 8h | 8h |

| ID | WBS | Task | Duration | Start | Finish | Predecessors | Complete | Constraint | Resources | Work | Actual work |
| --- | --- | --- | --- | --- | --- | --- | --- | --- | --- | --- | --- |
| 111 | 1.2.1.4.2 | **Modulo de Ajustes de la Configuración** | 3.12d | 2015-10-31 A | 2015-11-03 A |  | 100% |  | Edwar | 177h | 177h |
| 112 | 1.2.1.4.2.1 | **Construcción de Modulo** | 3d | 2015-10-31 A | 2015-11-03 A |  | 100% |  | Edwar; Julio; Roger | 152h | 152h |
| 113 | 1.2.1.4.2.1.1 | Acceso a Panel de Configuración | 1d | 2015-10-31 A | 2015-10-31 A |  | 100% |  | Edwar; Julio; Roger | 24h | 24h |
| 114 | 1.2.1.4.2.1.2 | Soporte de Idiomas Inglés y Español | 1d | 2015-11-02 A | 2015-11-02 A | 113 | 100% |  | Edwar; Julio; Roger | 24h | 24h |
| 115 | 1.2.1.4.2.1.3 | Migración de Datos de Rutas Personalizadas | 1d | 2015-11-03 A | 2015-11-03 A | 114 | 100% |  | Edwar; Julio; Roger | 24h | 24h |
| 116 | 1.2.1.4.2.1.4 | Traspaso de Información | 1d | 2015-11-03 A | 2015-11-03 A |  | 100% | start no earlier than 2015-11-03 | Edwar | 8h | 8h |
| 117 | 1.2.1.4.3 | **Modulo Lista de Alarmas** | 2.12d | 2015-11-04 A | 2015-11-05 A |  | 100% |  | Edwar; Roger | 66h | 66h |
| 118 | 1.2.1.4.3.1 | **Construcción de Modulo** | 2d? | 2015-11-04 A | 2015-11-05 A |  | 100% |  | Roger | 32h | 32h |
| 119 | 1.2.1.4.3.1.1 | Administración de Múltiples registros de Alarmas | 1d | 2015-11-04 A | 2015-11-04 A |  | 100% |  | Roger | 8h | 8h |
| 120 | 1.2.1.4.3.1.2 | Historial de Alarmas | 1d | 2015-11-05 A | 2015-11-05 A | 119 | 100% |  | Roger | 8h | 8h |
| 121 | 1.2.1.4.3.1.3 | Traspaso de Información | 1d? | 2015-11-05 A | 2015-11-05 A |  | 100% | start no earlier than 2015-11-05 |  |  |  |
| 122 | 1.2.1.4.4 | **Seguridad** | 9d | 2015-10-26 A | 2015-11-04 A |  | 100% |  | Edwar; Julio; Roger | 855h | 855h |
| 123 | 1.2.1.4.4.1 | Control de la Piratería de la Aplicación | 8.88d | 2015-10-26 A | 2015-11-04 A |  | 100% | finish no earlier than 2015-11-04 | Edwar; Julio; Roger | 213h | 213h |
| 124 | 1.2.1.4.4.2 | Ahorro de Energía | 8.88d | 2015-10-26 A | 2015-11-04 A |  | 100% | finish no earlier than 2015-11-04 | Edwar; Julio; Roger | 213h | 213h |
| 125 | 1.2.1.4.4.3 | Muestreo de Licencia | 8.88d | 2015-10-26 A | 2015-11-04 A |  | 100% | finish no earlier than 2015-11-04 | Edwar; Julio; Roger | 213h | 213h |
| 126 | 1.2.1.4.5 | Actualizar Matriz de Trazabilidad de Requerimientos | 2d | 2015-11-06 A | 2015-11-07 A |  | 100% | start no earlier than 2015-11-06 | Roger | 16h | 16h |
| 127 | 1.2.1.4.6 | Traspaso de Información | 1d | 2015-11-07 A | 2015-11-07 A |  | 100% | start no earlier than 2015-11-07 | Edwar | 8h | 8h |
| 128 | 1.2.1.5 | **Pruebas** | 6d | 2015-11-09 A | 2015-11-14 A |  | 100% |  | Julio | 432h | 432h |
| 129 | 1.2.1.5.1 | **Pruebas Internas** | 3d | 2015-11-09 A | 2015-11-11 A |  | 100% |  | Julio | 122h | 122h |
| 130 | 1.2.1.5.1.1 | **Modulo Configura tu Alarma** | 1d | 2015-11-09 A | 2015-11-09 A |  | 100% |  | Roger | 32h | 32h |
| 131 | 1.2.1.5.1.1.1 | Elaborar Pruebas de Modulo | 1d | 2015-11-09 A | 2015-11-09 A |  | 100% |  | Roger | 8h | 8h |
| 132 | 1.2.1.5.1.1.2 | Elaborar Informe de Prueba | 1d | 2015-11-09 A | 2015-11-09 A |  | 100% | start no earlier than 2015-11-09 | Roger | 8h | 8h |
| 133 | 1.2.1.5.1.1.3 | Traspaso de Información | 1d | 2015-11-09 A | 2015-11-09 A |  | 100% | start no earlier than 2015-11-09 | Edwar | 8h | 8h |
| 134 | 1.2.1.5.1.2 | **Modulo de Ajustes de la Configuración** | 1.12d | 2015-11-10 A | 2015-11-10 A |  | 100% |  | Edwar | 33h | 33h |
| 135 | 1.2.1.5.1.2.1 | Elaborar Pruebas de Modulo | 1d | 2015-11-10 A | 2015-11-10 A |  | 100% |  | Edwar | 8h | 8h |
| 136 | 1.2.1.5.1.2.2 | Elaborar Informe de Prueba | 1d | 2015-11-10 A | 2015-11-10 A |  | 100% | start no earlier than 2015-11-10 | Edwar | 8h | 8h |
| 137 | 1.2.1.5.1.2.3 | Traspaso de Información | 1d | 2015-11-10 A | 2015-11-10 A |  | 100% | start no earlier than 2015-11-10 | Edwar | 8h | 8h |

| ID | WBS | Task | Duration | Start | Finish | Predecessors | Complete | Constraint | Resources | Work | Actual work |
| --- | --- | --- | --- | --- | --- | --- | --- | --- | --- | --- | --- |
| 138 | 1.2.1.5.1.3 | **Modulo Lista de Alarmas** | 1.12d | 2015-11-11 A | 2015-11-11 A |  | 100% |  | Julio | 33h | 33h |
| 139 | 1.2.1.5.1.3.1 | Elaborar Pruebas de Modulo | 1d | 2015-11-11 A | 2015-11-11 A |  | 100% |  | Edwar | 8h | 8h |
| 140 | 1.2.1.5.1.3.2 | Elaborar Informe de Prueba | 1d | 2015-11-11 A | 2015-11-11 A |  | 100% |  | Edwar | 8h | 8h |
| 141 | 1.2.1.5.1.3.3 | Traspaso de Información | 1d | 2015-11-11 A | 2015-11-11 A |  | 100% |  | Edwar | 8h | 8h |
| 142 | 1.2.1.5.2 | **Pruebas Externas** | 2.12d | 2015-11-12 A | 2015-11-13 A |  | 100% |  | Edwar; Julio; Roger | 246h | 246h |
| 143 | 1.2.1.5.2.1 | **Módulo Configura tu Alarma** | 1d | 2015-11-12 A | 2015-11-12 A |  | 100% |  | Edwar; Julio; Roger | 64h | 64h |
| 144 | 1.2.1.5.2.1.1 | Elaborar Pruebas de Modulo | 1d | 2015-11-12 A | 2015-11-12 A |  | 100% |  | Edwar; Julio; Roger | 24h | 24h |
| 145 | 1.2.1.5.2.1.2 | Elaborar Informe de Prueba | 1d | 2015-11-12 A | 2015-11-12 A |  | 100% |  | Roger | 8h | 8h |
| 146 | 1.2.1.5.2.1.3 | Traspaso de Información | 1d | 2015-11-12 A | 2015-11-12 A |  | 100% |  | Edwar | 8h | 8h |
| 147 | 1.2.1.5.2.2 | **Módulo de Ajustes de la Configuración** | 1d | 2015-11-12 A | 2015-11-12 A |  | 100% |  | Edwar; Julio; Roger | 64h | 64h |
| 148 | 1.2.1.5.2.2.1 | Elaborar Pruebas de Modulo | 1d | 2015-11-12 A | 2015-11-12 A |  | 100% |  | Edwar; Julio; Roger | 24h | 24h |
| 149 | 1.2.1.5.2.2.2 | Elaborar Informe de Prueba | 1d | 2015-11-12 A | 2015-11-12 A |  | 100% |  | Roger | 8h | 8h |
| 150 | 1.2.1.5.2.2.3 | Traspaso de Información | 1d | 2015-11-12 A | 2015-11-12 A |  | 100% |  | Edwar | 8h | 8h |
| 151 | 1.2.1.5.2.3 | **Módulo Lista de Alarmas** | 1.12d | 2015-11-13 A | 2015-11-13 A |  | 100% |  | Edwar; Julio; Roger | 67h | 67h |
| 152 | 1.2.1.5.2.3.1 | Elaborar Pruebas de Modulo | 1d? | 2015-11-13 A | 2015-11-13 A |  | 100% |  | Edwar; Julio; Roger | 24h | 24h |
| 153 | 1.2.1.5.2.3.2 | Elaborar Informe de Prueba | 1d? | 2015-11-13 A | 2015-11-13 A |  | 100% |  | Roger | 8h | 8h |
| 154 | 1.2.1.5.2.3.3 | Traspaso de Información | 1d? | 2015-11-13 A | 2015-11-13 A |  | 100% |  | Edwar | 8h | 8h |
| 155 | 1.2.1.5.3 | Elaborar Matriz de Trazabilidad de Requerimientos Final | 1d | 2015-11-14 A | 2015-11-14 A |  | 100% | start no earlier than 2015-11-14 | Roger | 8h | 8h |
| 156 | 1.2.1.5.4 | Traspaso de Información | 1d | 2015-11-14 A | 2015-11-14 A |  | 100% | start no earlier than 2015-11-14 | Edwar | 8h | 8h |
| 157 | 1.2.1.6 | **Implementación** | 2d | 2015-11-16 A | 2015-11-17 A |  | 100% |  | Edwar; Roger; Julio | 224h | 224h |
| 158 | 1.2.1.6.1 | **Guía de Usuario** | 2d | 2015-11-16 A | 2015-11-17 A |  | 100% |  | Edwar; Roger; Julio | 104h | 104h |
| 159 | 1.2.1.6.1.1 | Elaborar Guía de Instalación de APK | 1d | 2015-11-16 A | 2015-11-16 A |  | 100% | start no earlier than 2015-11-16 | Edwar; Julio; Roger | 24h | 24h |
| 160 | 1.2.1.6.1.2 | Elaborar Manual de Usuario con todos los módulos actualizados | 1d | 2015-11-16 A | 2015-11-16 A |  | 100% | start no earlier than 2015-11-16 | Roger; Edwar; Julio | 24h | 24h |
| 161 | 1.2.1.6.1.3 | Traspaso de Información | 1d | 2015-11-17 A | 2015-11-17 A | 160 | 100% |  | Edwar | 8h | 8h |

| ID | WBS | Task | Duration | Start | Finish | Predecessors | Complete | Constraint | Resources | Work | Actual work |
| --- | --- | --- | --- | --- | --- | --- | --- | --- | --- | --- | --- |
| 162 | 1.2.1.6.2 | **Preparación de APK** | 1d | 2015-11-17 A | 2015-11-17 A |  | 100% |  | Edwar; Roger; Julio | 72h | 72h |
| 163 | 1.2.1.6.2.1 | Creación del archivo APK de instalación | 1d | 2015-11-17 A | 2015-11-17 A |  | 100% | start no earlier than 2015-11-17 | Edwar; Roger; Julio | 24h | 24h |
| 164 | 1.2.1.6.2.2 | Publicación de la Aplicación en Plataforma Google Play | 1d | 2015-11-17 A | 2015-11-17 A |  | 100% | start no earlier than 2015-11-17 | Edwar; Roger; Julio | 24h | 24h |
| 165 | 1.3 | **Inducción de personal** | 6.12d | 2015-10-19 A | 2015-10-24 A |  | 100% |  | Edwar; Roger | 178h | 178h |
| 166 | 1.3.1 | Establecer personal para inducción | 1d | 2015-10-19 A | 2015-10-19 A |  | 100% | start no earlier than 2015-10-19 | Roger | 8h | 8h |
| 167 | 1.3.2 | Realizar inducción al personal | 3d | 2015-10-20 A | 2015-10-22 A | 166 | 100% |  | Roger | 24h | 24h |
| 168 | 1.3.3 | Verificar proceso de inducción | 1d | 2015-10-23 A | 2015-10-23 A |  | 100% | start no earlier than 2015-10-23 | Edwar; Roger | 16h | 16h |
| 169 | 1.3.4 | Elaborar Certificado de Inducción de Personal | 1d | 2015-10-23 A | 2015-10-23 A | 167 | 100% |  | Edwar; Roger | 16h | 16h |
| 170 | 1.3.5 | Traspaso de Información | 1d | 2015-10-23 A | 2015-10-23 A |  | 100% | start no earlier than 2015-10-23 | Edwar | 8h | 8h |
| 171 | 1.3.6 | Pasar a área de Desarrollo a Personal Capacitado | 1d | 2015-10-24 A | 2015-10-24 A | 170 | 100% |  | Roger | 8h | 8h |
| 172 | 1.4 | **Proceso de Aseguramiento de la Calidad del Proyecto** | 54d | 2015-09-15 A | 2015-11-17 A |  | 100% |  |  | 1289h | 1289h |
| 173 | 1.4.1 | **Primera Revisión** | 13.12d | 2015-09-15 A | 2015-09-29 A |  | 100% |  | Edwar; Julio | 426h | 426h |
| 174 | 1.4.1.1 | Elaborar Herramienta de Gestion de Aseguramiento de la Calidad | 13d | 2015-09-15 A | 2015-09-29 A |  | 100% | finish no earlier than 2015-09-29 | Julio | 104h | 104h |
| 175 | 1.4.1.2 | Elaborar CheckList de Aseguramiento de la Calidad | 13d | 2015-09-15 A | 2015-09-29 A |  | 100% | finish no earlier than 2015-09-29 | Julio | 104h | 104h |
| 176 | 1.4.1.3 | Traspaso de Información | 1d | 2015-09-29 A | 2015-09-29 A |  | 100% |  | Edwar | 8h | 8h |
| 177 | 1.4.2 | **Segunda Revisión** | 13.12d | 2015-10-13 A | 2015-10-27 A |  | 100% |  | Edwar; Julio | 425h | 425h |
| 178 | 1.4.2.1 | Elaborar Herramienta de Gestion de Aseguramiento de la Calidad | 13d | 2015-10-13 A | 2015-10-27 A |  | 100% | finish no earlier than 2015-10-27 | Julio | 104h | 104h |
| 179 | 1.4.2.2 | Actualizar CheckList de Aseguramiento de la Calidad | 13d | 2015-10-13 A | 2015-10-27 A |  | 100% | finish no earlier than 2015-10-27 | Julio | 104h | 104h |
| 180 | 1.4.2.3 | Traspaso de Información | 0.88d | 2015-10-27 A | 2015-10-27 A | 179 | 100% |  | Edwar | 7h | 7h |
| 181 | 1.4.3 | **Tercera Revisión** | 13.12d | 2015-11-02 A | 2015-11-16 A |  | 100% |  | Edwar; Julio | 422h | 422h |
| 182 | 1.4.3.1 | Elaborar Herramienta de Gestion de Aseguramiento de la Calidad | 13d | 2015-11-02 A | 2015-11-16 A |  | 100% | finish no earlier than 2015-11-16 | Julio | 104h | 104h |
| 183 | 1.4.3.2 | Actualizar CheckList de Aseguramiento de la Calidad | 13d | 2015-11-02 A | 2015-11-16 A |  | 100% | finish no earlier than 2015-11-16 | Julio | 104h | 104h |
| 184 | 1.4.3.3 | Traspaso de Información | 0.5d | 2015-11-16 A | 2015-11-16 A |  | 100% | finish no earlier than 2015-11-16 | Edwar | 4h | 4h |
| 185 | 1.4.4 | Elaborar Matriz de Seguimiento del Proyecto | 1d | 2015-11-17 A | 2015-11-17 A |  | 100% | finish no earlier than 2015-11-17 |  |  |  |
| 186 | 1.4.5 | Elaborar Informe de Revisión General del QA | 1d | 2015-11-17 A | 2015-11-17 A |  | 100% | start no earlier than 2015-09-17 | Julio | 8h | 8h |
| 187 | 1.4.6 | Traspaso de Información | 1d | 2015-11-17 A | 2015-11-17 A |  | 100% | start no earlier than 2015-09-17 | Edwar | 8h | 8h |

| ID | WBS | Task | Duration | Start | Finish | Complete | Resources | Work | Actual work |
| --- | --- | --- | --- | --- | --- | --- | --- | --- | --- |
| 188 | 1.5 | **Reuniones Internas EJR-SOFT** | 54d | 2015-09-12 A | 2015-11-14 A | 100% | Edwar; Julio; Roger | 1728h | 1728h |
| 189 | 1.5.1 | **Reunión Quincenal 1** | 1d | 2015-09-12 A | 2015-09-12 A | 100% | Edwar; Julio; Roger | 72h | 72h |
| 190 | 1.5.1.1 | Elaborar Acta de Reunión | 1d | 2015-09-12 A | 2015-09-12 A | 100% | Edwar; Julio; Roger | 24h | 24h |
| 191 | 1.5.1.2 | Traspaso de Información | 1d | 2015-09-12 A | 2015-09-12 A | 100% | Edwar; Julio; Roger | 24h | 24h |
| 192 | 1.5.2 | **Reunión Quincenal 2** | 1d | 2015-09-26 A | 2015-09-26 A | 100% | Edwar; Julio; Roger | 72h | 72h |
| 193 | 1.5.2.1 | Elaborar Acta de Reunión | 1d | 2015-09-26 A | 2015-09-26 A | 100% | Edwar; Julio; Roger | 24h | 24h |
| 194 | 1.5.2.2 | Traspaso de Información | 1d | 2015-09-26 A | 2015-09-26 A | 100% | Edwar; Julio; Roger | 24h | 24h |
| 195 | 1.5.3 | **Reunión Quincenal 3** | 1d | 2015-10-10 A | 2015-10-10 A | 100% | Edwar; Julio; Roger | 72h | 72h |
| 196 | 1.5.3.1 | Elaborar Acta de Reunión | 1d | 2015-10-10 A | 2015-10-10 A | 100% | Edwar; Julio; Roger | 24h | 24h |
| 197 | 1.5.3.2 | Traspaso de Información | 1d | 2015-10-10 A | 2015-10-10 A | 100% | Edwar; Julio; Roger | 24h | 24h |
| 198 | 1.5.4 | **Reunión Quincenal 4** | 1d | 2015-10-24 A | 2015-10-24 A | 100% | Edwar; Julio; Roger | 72h | 72h |
| 199 | 1.5.4.1 | Elaborar Acta de Reunión | 1d | 2015-10-24 A | 2015-10-24 A | 100% | Edwar; Julio; Roger | 24h | 24h |
| 200 | 1.5.4.2 | Traspaso de Información | 1d | 2015-10-24 A | 2015-10-24 A | 100% | Edwar; Julio; Roger | 24h | 24h |
| 201 | 1.5.5 | **Reunión Quincenal 5** | 1d | 2015-11-07 A | 2015-11-07 A | 100% | Edwar; Julio; Roger | 72h | 72h |
| 202 | 1.5.5.1 | Elaborar Acta de Reunión | 1d | 2015-11-07 A | 2015-11-07 A | 100% | Edwar; Julio; Roger | 24h | 24h |
| 203 | 1.5.5.2 | Traspaso de Información | 1d | 2015-11-07 A | 2015-11-07 A | 100% | Edwar; Julio; Roger | 24h | 24h |
| 204 | 1.5.6 | **Reunión Final** | 1d | 2015-11-14 A | 2015-11-14 A | 100% | Edwar; Julio; Roger | 72h | 72h |
| 205 | 1.5.6.1 | Elaborar Acta de Reunión | 1d | 2015-11-14 A | 2015-11-14 A | 100% | Edwar; Julio; Roger | 24h | 24h |
| 206 | 1.5.6.2 | Traspaso de Información | 1d | 2015-11-14 A | 2015-11-14 A | 100% | Edwar; Julio; Roger | 24h | 24h |
| 207 | 1.6 | **Reuniones Externas EJR-SOFT - CLIENTE** | 48d | 2015-09-24 A | 2015-11-19 A | 100% | Edwar; Julio; Roger; MST EIRL | 1920h | 1920h |
| 208 | 1.6.1 | **Primera Presentación del Proyecto** | 1d | 2015-09-24 A | 2015-09-24 A | 100% | Edwar; Julio; Roger; MST EIRL | 128h | 128h |
| 209 | 1.6.1.1 | Reunión Externa con MST EIRL | 1d | 2015-09-24 A | 2015-09-24 A | 100% | Edwar; Julio; MST EIRL; Roger | 32h | 32h |
| 210 | 1.6.1.2 | Acta de Reunión con acuerdos tomados | 1d | 2015-09-24 A | 2015-09-24 A | 100% | Edwar; Julio; MST EIRL; Roger | 32h | 32h |
| 211 | 1.6.1.3 | Traspaso de Información | 1d | 2015-09-24 A | 2015-09-24 A | 100% | Edwar; Julio; MST EIRL; Roger | 32h | 32h |

| ID | WBS | Task | Duration | Start | Finish | Complete | Resources | Work | Actual work |
| --- | --- | --- | --- | --- | --- | --- | --- | --- | --- |
| 212 | 1.6.2 | **Segunda Presentación del Proyecto** | 1d | 2015-10-20 A | 2015-10-20 A | 100% | Edwar; Julio; Roger; MST EIRL | 128h | 128h |
| 213 | 1.6.2.1 | Reunión Externa con MST EIRL | 1d | 2015-10-20 A | 2015-10-20 A | 100% | Edwar; Julio; MST EIRL; Roger | 32h | 32h |
| 214 | 1.6.2.2 | Acta de Reunión con acuerdos tomados | 1d | 2015-10-20 A | 2015-10-20 A | 100% | Edwar; Julio; MST EIRL; Roger | 32h | 32h |
| 215 | 1.6.2.3 | Traspaso de Información | 1d | 2015-10-20 A | 2015-10-20 A | 100% | Edwar; Julio; MST EIRL; Roger | 32h | 32h |
| 216 | 1.6.3 | **Tercera Presentación del Proyecto** | 1d | 2015-11-19 A | 2015-11-19 A | 100% | Edwar; Julio; Roger; MST EIRL | 128h | 128h |
| 217 | 1.6.3.1 | Kick Off Meeting con Profesor | 1d | 2015-11-19 A | 2015-11-19 A | 100% | Edwar; Julio; MST EIRL; Roger | 32h | 32h |
| 218 | 1.6.3.2 | Acta de Reunión con acuerdos tomados | 1d | 2015-11-19 A | 2015-11-19 A | 100% | Edwar; Julio; MST EIRL; Roger | 32h | 32h |
| 219 | 1.6.3.3 | Traspaso de Información | 1d | 2015-11-19 A | 2015-11-19 A | 100% | Edwar; Julio; MST EIRL; Roger | 32h | 32h |
